# WBSchart2

How a schedule from MS Project changed from version to version. A marks actual dates.

## Version 1 (saved 2010-03-19, file Cronograma del Proyecto.mpp)

Note of the change: Se ingresa tareas del proyecto

| ID | WBS | Task | Duration | Start | Finish | Total float |
| --- | --- | --- | --- | --- | --- | --- |
| 1 | 1 | **Proyecto inVenta** | 1d? | 2010-03-11 | 2010-03-11 | 0d |
| 2 | 1.1 | **1.0 Gestion del Proyecto** | 1d? | 2010-03-11 | 2010-03-11 | 0d |
| 3 | 1.1.1 | **1.1 Iniciacion** | 1d? | 2010-03-11 | 2010-03-11 | 0d |
| 4 | 1.1.1.1 | **1.1.1 Project Charter** | 1d? | 2010-03-11 | 2010-03-11 | 0d |
| 5 |  | 1.1.1.A01 Reunion con el sponsor | 1d? | 2010-03-11 | 2010-03-11 | 0d |
| 6 |  | 1.1.1 A02 Elaborar Project Charter | 1d? | 2010-03-11 | 2010-03-11 | 0d |
| 7 |  | 1.1.1.A03 Revisar Project Charter | 1d? | 2010-03-11 | 2010-03-11 | 0d |
| 8 | 1.1.1.2 | **1.1.2 Scope Statement** | 1d? | 2010-03-11 | 2010-03-11 | 0d |
| 9 |  | 1.1.2.A01 Reunion con el sponsor | 1d? | 2010-03-11 | 2010-03-11 | 0d |
| 10 |  | 1.1.2.A02 Elaborar el Scope Statement | 1d? | 2010-03-11 | 2010-03-11 | 0d |
| 11 |  | 1.1.2.A03 Revisar el Scope Statement | 1d? | 2010-03-11 | 2010-03-11 | 0d |
| 12 | 1.1.2 | **1.2 Plan del Proyecto** | 1d? | 2010-03-11 | 2010-03-11 | 0d |
| 13 |  | 1.2.A01 Elaborar el plan del Proyecto | 1d? | 2010-03-11 | 2010-03-11 | 0d |
| 14 | 1.1.3 | **1.3 Informes del Estado del Proyecto** | 1d? | 2010-03-11 | 2010-03-11 | 0d |
| 15 |  | 1.3.A01 Elaborar informe del estado del proyecto | 1d? | 2010-03-11 | 2010-03-11 | 0d |
| 16 | 1.1.4 | **1.4 Reunion de Coordinacion Semanal** | 1d? | 2010-03-11 | 2010-03-11 | 0d |
| 17 |  | 1.4.A01 Realizar reunion de coordinacion | 1d? | 2010-03-11 | 2010-03-11 | 0d |
| 18 | 1.1.5 | **1.5 Cierre del Proyecto** | 1d? | 2010-03-11 | 2010-03-11 | 0d |
| 19 |  | 1.5.A01 Elaborar documentos de cierre del proyecto | 1d? | 2010-03-11 | 2010-03-11 | 0d |
| 20 | 1.2 | **2.0 Analisis** | 1d? | 2010-03-11 | 2010-03-11 | 0d |
| 21 | 1.2.1 | **2.1 Listado de necesidades** | 1d? | 2010-03-11 | 2010-03-11 | 0d |
| 22 |  | 2.1.A01 Determinar las necesidades del servicio | 1d? | 2010-03-11 | 2010-03-11 | 0d |
| 23 |  | 2.1.A02 Determinar las especificaciones y requerimientos | 1d? | 2010-03-11 | 2010-03-11 | 0d |
| 24 | 1.3 | **3.0 Licitacion y Adquisicion** | 1d? | 2010-03-11 | 2010-03-11 | 0d |
| 25 | 1.3.1 | **3.1 Licitacion** | 1d? | 2010-03-11 | 2010-03-11 | 0d |
| 26 | 1.3.1.1 | **3.1.1 Análisis de mercado** | 1d? | 2010-03-11 | 2010-03-11 | 0d |
| 27 |  | 3.1.1.A01 Determinar la capacidad interna y de los costos | 1d? | 2010-03-11 | 2010-03-11 | 0d |
| 28 |  | 3.1.1.A02 Identificar proveedores calificados | 1d? | 2010-03-11 | 2010-03-11 | 0d |
| 29 |  | 3.1.1.A03 Elaborar RFI | 1d? | 2010-03-11 | 2010-03-11 | 0d |
| 30 |  | 3.1.1.A04 Recepcionar RFIs | 1d? | 2010-03-11 | 2010-03-11 | 0d |
| 31 |  | 3.1.1.A05 Decisiones | 1d? | 2010-03-11 | 2010-03-11 | 0d |
| 32 | 1.3.1.2 | **3.1.2 Solicitud de propuesta (RFP)** | 1d? | 2010-03-11 | 2010-03-11 | 0d |
| 33 |  | 3.1.2.A01 Desarrollar el criterio de solucion | 1d? | 2010-03-11 | 2010-03-11 | 0d |
| 34 |  | 3.1.2.A02 Desarrollar las bases tecnicas | 1d? | 2010-03-11 | 2010-03-11 | 0d |
| 35 | 1.3.1.3 | **3.1.3 Carta de Intención (LOI)** | 1d? | 2010-03-11 | 2010-03-11 | 0d |
| 36 |  | 3.1.3.A01 Emitir el RFQ | 1d? | 2010-03-11 | 2010-03-11 | 0d |
| 37 |  | 3.1.3.A02 Emitir el RFP | 1d? | 2010-03-11 | 2010-03-11 | 0d |
| 38 |  | 3.1.3.A03 Recibir ofertas | 1d? | 2010-03-11 | 2010-03-11 | 0d |
| 39 |  | 3.1.3.A04 Evaluar Respuestas | 1d? | 2010-03-11 | 2010-03-11 | 0d |
| 40 |  | 3.1.3.A05 Calificar proveedores | 1d? | 2010-03-11 | 2010-03-11 | 0d |
| 41 |  | 3.1.3.A06 Adjudicar/Seleccionar Proveedores | 1d? | 2010-03-11 | 2010-03-11 | 0d |
| 42 |  | 3.1.3.A07 Emitir Carta de Intención (LOI) | 1d? | 2010-03-11 | 2010-03-11 | 0d |
| 43 | 1.3.2 | **3.2 Adquisicion** | 1d? | 2010-03-11 | 2010-03-11 | 0d |
| 44 | 1.3.2.1 | **3.2.1 Contrato Solucion Movil** | 1d? | 2010-03-11 | 2010-03-11 | 0d |
| 45 |  | 3.2.1.A01 Desarrollar el contrato marco | 1d? | 2010-03-11 | 2010-03-11 | 0d |
| 46 |  | 3.2.1.A02 Determinar cronograma | 1d? | 2010-03-11 | 2010-03-11 | 0d |
| 47 |  | 3.2.1.A03 Determinar el presupuesto | 1d? | 2010-03-11 | 2010-03-11 | 0d |
| 48 | 1.3.2.2 | **3.2.2 Contrato equipos y suministros** | 1d? | 2010-03-11 | 2010-03-11 | 0d |
| 49 |  | 3.2.2.A01 Desarrollar el contrato marco | 1d? | 2010-03-11 | 2010-03-11 | 0d |
| 50 |  | 3.2.2.A02 Determinar cronograma | 1d? | 2010-03-11 | 2010-03-11 | 0d |
| 51 |  | 3.2.2.A03 Determinar el presupuesto | 1d? | 2010-03-11 | 2010-03-11 | 0d |
| 52 | 1.3.2.3 | **3.2.3 Orden de Compra solucion movil** | 1d? | 2010-03-11 | 2010-03-11 | 0d |
| 53 |  | 3.2.3.A01 Solicitar la aprobacion del gasto | 1d? | 2010-03-11 | 2010-03-11 | 0d |
| 54 |  | 3.2.3.A02 Solicitar la emision de la orden de compra | 1d? | 2010-03-11 | 2010-03-11 | 0d |
| 55 | 1.3.2.4 | **3.2.4 Orden de compra equipos y suministros** | 1d? | 2010-03-11 | 2010-03-11 | 0d |
| 56 |  | 3.2.4.A01 Solicitar la aprobacion del gasto | 1d? | 2010-03-11 | 2010-03-11 | 0d |
| 57 |  | 3.2.4.A02 Solicitar la emision de la orden de compra | 1d? | 2010-03-11 | 2010-03-11 | 0d |
| 58 | 1.3.2.5 | **3.2.5 Aplicativo movil** | 1d? | 2010-03-11 | 2010-03-11 | 0d |
| 59 |  | 3.2.5.A01 Aprobacion del aplicativo movil | 1d? | 2010-03-11 | 2010-03-11 | 0d |
| 60 | 1.3.2.6 | **3.2.6 Equipos y suministros** | 1d? | 2010-03-11 | 2010-03-11 | 0d |
| 61 |  | 3.2.6.A01 Aprobacion de los equipos y suministros | 1d? | 2010-03-11 | 2010-03-11 | 0d |
| 62 | 1.4 | **4.0 Implementacion** | 1d? | 2010-03-11 | 2010-03-11 | 0d |
| 63 | 1.4.1 | **4.1 Etapa 1** | 1d? | 2010-03-11 | 2010-03-11 | 0d |
| 64 | 1.4.1.1 | **4.1.1 Solucion Movil implementada** | 1d? | 2010-03-11 | 2010-03-11 | 0d |
| 65 |  | 4.1.1.A01 Implementar la solución móvil en la empresa | 1d? | 2010-03-11 | 2010-03-11 | 0d |
| 66 |  | 4.1.1.A02 Integrar la solución móvil la backend de la empresa | 1d? | 2010-03-11 | 2010-03-11 | 0d |
| 67 |  | 4.1.1.A03 Realizar pruebas en el sistema antes de la implementacion | 1d? | 2010-03-11 | 2010-03-11 | 0d |
| 68 | 1.4.1.2 | **4.1.2 Reporte implementacion** | 1d? | 2010-03-11 | 2010-03-11 | 0d |
| 69 |  | 4.1.2.A01 Elaborar el reporte de la etapa 1 | 1d? | 2010-03-11 | 2010-03-11 | 0d |
| 70 |  | 4.1.2.A02 Revisar el reporte de la etapa 1 | 1d? | 2010-03-11 | 2010-03-11 | 0d |

| ID | WBS | Task | Duration | Start | Finish | Total float |
| --- | --- | --- | --- | --- | --- | --- |
| 71 | 1.4.2 | **4.2 Etapa 2** | 1d? | 2010-03-11 | 2010-03-11 | 0d |
| 72 | 1.4.2.1 | **4.2.1 Terminales móviles operativos** | 1d? | 2010-03-11 | 2010-03-11 | 0d |
| 73 |  | 4.2.1.A01 Identificar a los usuarios de aplicativo móvil | 1d? | 2010-03-11 | 2010-03-11 | 0d |
| 74 |  | 4.2.1.A02 Entregar terminales móviles a usuarios | 1d? | 2010-03-11 | 2010-03-11 | 0d |
| 75 |  | 4.2.1.A03 Validar la operatividad del aplicativo móvil | 1d? | 2010-03-11 | 2010-03-11 | 0d |
| 76 | 1.4.2.2 | **4.2.2 Reporte implementacion de terminales** | 1d? | 2010-03-11 | 2010-03-11 | 0d |
| 77 |  | 4.2.2.A01 Elaborar el reporte de la etapa 2 | 1d? | 2010-03-11 | 2010-03-11 | 0d |
| 78 |  | 4.2.2.A02 Revisar el reporte de la etapa 2 | 1d? | 2010-03-11 | 2010-03-11 | 0d |
| 79 | 1.4.3 | **4.3 Etapa 3** | 1d? | 2010-03-11 | 2010-03-11 | 0d |
| 80 | 1.4.3.1 | **4.3.1 Impresoras y suminitros operativos** | 1d? | 2010-03-11 | 2010-03-11 | 0d |
| 81 |  | 4.3.1.A01 Identificar las unidades de transporte que utilizarán la solución móvil | 1d? | 2010-03-11 | 2010-03-11 | 0d |
| 82 |  | 4.3.1.A02 Instalar las impresoras y suministros en las unidades de transporte identificadas | 1d? | 2010-03-11 | 2010-03-11 | 0d |
| 83 |  | 4.3.1.A03 Validar la operatividad de las impresoras y suministros | 1d? | 2010-03-11 | 2010-03-11 | 0d |
| 84 | 1.4.3.2 | **4.3.2 Reporte de implementacion de equipos** | 1d? | 2010-03-11 | 2010-03-11 | 0d |
| 85 |  | 4.3.2.A01 Elaborar el reporte de la etapa 3 | 1d? | 2010-03-11 | 2010-03-11 | 0d |
| 86 |  | 4.3.2.A02 Revisar el reporte de la etapa 3 | 1d? | 2010-03-11 | 2010-03-11 | 0d |
| 87 | 1.4.4 | **4.4 Etapa 4** | 1d? | 2010-03-11 | 2010-03-11 | 0d |
| 88 | 1.4.4.1 | **4.4.1 Documento solucion a problemas** | 1d? | 2010-03-11 | 2010-03-11 | 0d |
| 89 |  | 4.4.1A01 Elaborar el documento de solucion a problemas. | 1d? | 2010-03-11 | 2010-03-11 | 0d |
| 90 |  | 4.4.1A02 Revisar el reporte de solucion de problemas | 1d? | 2010-03-11 | 2010-03-11 | 0d |
| 91 | 1.5 | **5.0 Capacitacion** | 1d? | 2010-03-11 | 2010-03-11 | 0d |
| 92 | 1.5.1 | **5.1 Dictado** | 1d? | 2010-03-11 | 2010-03-11 | 0d |
| 93 |  | 5.1.A01 Realizar la sesion | 1d? | 2010-03-11 | 2010-03-11 | 0d |
| 94 | 1.5.2 | **5.2 Control de evaluacion** | 1d? | 2010-03-11 | 2010-03-11 | 0d |
| 95 |  | 5.2.A01 Elaborar controles de evaluacion | 1d? | 2010-03-11 | 2010-03-11 | 0d |
| 96 |  | 5.2.A02 Revisar controles de capacitacion | 1d? | 2010-03-11 | 2010-03-11 | 0d |
| 97 | 1.5.3 | **5.3 Informe** | 1d? | 2010-03-11 | 2010-03-11 | 0d |
| 98 |  | 5.3.A01 Elaborar el informe de la sesion | 1d? | 2010-03-11 | 2010-03-11 | 0d |
| 99 |  | 5.3.A02 Revisar informe | 1d? | 2010-03-11 | 2010-03-11 | 0d |
| 100 | 1.6 | **6. 0 Salida en vivo** | 1d? | 2010-03-11 | 2010-03-11 | 0d |
| 101 |  | 6.0.A1 Puesta en marcha del aplicativo | 1d? | 2010-03-11 | 2010-03-11 | 0d |
| 102 | 1.7 | **7.0 Informes** | 1d? | 2010-03-11 | 2010-03-11 | 0d |
| 103 | 1.7.1 | **7.1 Informe mensual** | 1d? | 2010-03-11 | 2010-03-11 | 0d |
| 104 | 1.7.1.1 | **7.1.1 Informe mes 1** | 1d? | 2010-03-11 | 2010-03-11 | 0d |
| 105 |  | 7.1.1.A01 Elaborar informe mensual 1 | 1d? | 2010-03-11 | 2010-03-11 | 0d |
| 106 |  | 7.1.1.A02 Revisar informe 1 | 1d? | 2010-03-11 | 2010-03-11 | 0d |
| 107 | 1.7.1.2 | **7.1.2 Informe mes 2** | 1d? | 2010-03-11 | 2010-03-11 | 0d |
| 108 |  | 7.1.2.A01 Elaborar informe mensual 2 | 1d? | 2010-03-11 | 2010-03-11 | 0d |
| 109 |  | 7.1.2.A02 Revisar informe 2 | 1d? | 2010-03-11 | 2010-03-11 | 0d |
| 110 | 1.7.1.3 | **7.1.3 Informe mes 3** | 1d? | 2010-03-11 | 2010-03-11 | 0d |
| 111 |  | 7.1.3.A01 Elaborar informe mensual 3 | 1d? | 2010-03-11 | 2010-03-11 | 0d |
| 112 |  | 7.1.3.A02 Revisar informe 3 | 1d? | 2010-03-11 | 2010-03-11 | 0d |
| 113 | 1.7.1.4 | **7.1.4 Informe mes 4** | 1d? | 2010-03-11 | 2010-03-11 | 0d |
| 114 |  | 7.1.4.A01 Elaborar informe mensual 4 | 1d? | 2010-03-11 | 2010-03-11 | 0d |
| 115 |  | 7.1.4.A02 Revisar informe 4 | 1d? | 2010-03-11 | 2010-03-11 | 0d |
| 116 | 1.7.1.5 | **7.1.5 Informe mes 5** | 1d? | 2010-03-11 | 2010-03-11 | 0d |
| 117 |  | 7.1.5.A01 Elaborar informe mensual 5 | 1d? | 2010-03-11 | 2010-03-11 | 0d |
| 118 |  | 7.1.5.A02 Revisar informe 5 | 1d? | 2010-03-11 | 2010-03-11 | 0d |
| 119 | 1.7.1.6 | **7.1.6 Informe mes 6** | 1d? | 2010-03-11 | 2010-03-11 | 0d |
| 120 |  | 7.1.6.A01 Elaborar informe mensual 6 | 1d? | 2010-03-11 | 2010-03-11 | 0d |
| 121 |  | 7.1.6.A02 Revisar informe 6 | 1d? | 2010-03-11 | 2010-03-11 | 0d |
| 122 | 1.7.2 | **7.2 Informe final** | 1d? | 2010-03-11 | 2010-03-11 | 0d |
| 123 |  | 7.2.A01 Elaborar informe final | 1d? | 2010-03-11 | 2010-03-11 | 0d |
| 124 |  | 7.2.A02 Revisar informe final | 1d? | 2010-03-11 | 2010-03-11 | 0d |

## Version 2 (saved 2010-03-20, file Cronograma del Proyecto.mpp)

Note of the change: con costo por hora del recurso

Last finish 2010-03-11 → 2010-09-07 (+180d).

Added:

| ID | Task | Duration | Start | Finish | Predecessors | Constraint | Resources |
| --- | --- | --- | --- | --- | --- | --- | --- |
| 14 | **1.3 Informes del estado del proyecto** | 130.12d | 2010-03-08 09:00 | 2010-09-06 10:00 |  |  |  |
| 15 | 1.3 Informes del estado del proyecto 1 | 1h | 2010-03-08 09:00 | 2010-03-08 10:00 |  | start no earlier than 2010-03-08 08:00 | Enrique Madrid |
| 16 | 1.3 Informes del estado del proyecto 2 | 1h | 2010-03-15 09:00 | 2010-03-15 10:00 |  | start no earlier than 2010-03-15 08:00 | Enrique Madrid |
| 17 | 1.3 Informes del estado del proyecto 3 | 1h | 2010-03-22 09:00 | 2010-03-22 10:00 |  | start no earlier than 2010-03-22 08:00 | Enrique Madrid |
| 18 | 1.3 Informes del estado del proyecto 4 | 1h | 2010-03-29 09:00 | 2010-03-29 10:00 |  | start no earlier than 2010-03-29 08:00 | Enrique Madrid |
| 19 | 1.3 Informes del estado del proyecto 5 | 1h | 2010-04-05 09:00 | 2010-04-05 10:00 |  | start no earlier than 2010-04-05 08:00 | Enrique Madrid |
| 20 | 1.3 Informes del estado del proyecto 6 | 1h | 2010-04-12 09:00 | 2010-04-12 10:00 |  | start no earlier than 2010-04-12 08:00 | Enrique Madrid |
| 21 | 1.3 Informes del estado del proyecto 7 | 1h | 2010-04-19 09:00 | 2010-04-19 10:00 |  | start no earlier than 2010-04-19 08:00 | Enrique Madrid |
| 22 | 1.3 Informes del estado del proyecto 8 | 1h | 2010-04-26 09:00 | 2010-04-26 10:00 |  | start no earlier than 2010-04-26 08:00 | Enrique Madrid |
| 23 | 1.3 Informes del estado del proyecto 9 | 1h | 2010-05-03 09:00 | 2010-05-03 10:00 |  | start no earlier than 2010-05-03 08:00 | Enrique Madrid |
| 24 | 1.3 Informes del estado del proyecto 10 | 1h | 2010-05-10 09:00 | 2010-05-10 10:00 |  | start no earlier than 2010-05-10 08:00 | Enrique Madrid |
| 25 | 1.3 Informes del estado del proyecto 11 | 1h | 2010-05-17 09:00 | 2010-05-17 10:00 |  | start no earlier than 2010-05-17 08:00 | Enrique Madrid |
| 26 | 1.3 Informes del estado del proyecto 12 | 1h | 2010-05-24 09:00 | 2010-05-24 10:00 |  | start no earlier than 2010-05-24 08:00 | Enrique Madrid |
| 27 | 1.3 Informes del estado del proyecto 13 | 1h | 2010-05-31 09:00 | 2010-05-31 10:00 |  | start no earlier than 2010-05-31 08:00 | Enrique Madrid |
| 28 | 1.3 Informes del estado del proyecto 14 | 1h | 2010-06-07 09:00 | 2010-06-07 10:00 |  | start no earlier than 2010-06-07 08:00 | Enrique Madrid |
| 29 | 1.3 Informes del estado del proyecto 15 | 1h | 2010-06-14 09:00 | 2010-06-14 10:00 |  | start no earlier than 2010-06-14 08:00 | Enrique Madrid |
| 30 | 1.3 Informes del estado del proyecto 16 | 1h | 2010-06-21 09:00 | 2010-06-21 10:00 |  | start no earlier than 2010-06-21 08:00 | Enrique Madrid |
| 31 | 1.3 Informes del estado del proyecto 17 | 1h | 2010-06-28 09:00 | 2010-06-28 10:00 |  | start no earlier than 2010-06-28 08:00 | Enrique Madrid |
| 32 | 1.3 Informes del estado del proyecto 18 | 1h | 2010-07-05 09:00 | 2010-07-05 10:00 |  | start no earlier than 2010-07-05 08:00 | Enrique Madrid |
| 33 | 1.3 Informes del estado del proyecto 19 | 1h | 2010-07-12 09:00 | 2010-07-12 10:00 |  | start no earlier than 2010-07-12 08:00 | Enrique Madrid |
| 34 | 1.3 Informes del estado del proyecto 20 | 1h | 2010-07-19 09:00 | 2010-07-19 10:00 |  | start no earlier than 2010-07-19 08:00 | Enrique Madrid |
| 35 | 1.3 Informes del estado del proyecto 21 | 1h | 2010-07-26 09:00 | 2010-07-26 10:00 |  | start no earlier than 2010-07-26 08:00 | Enrique Madrid |
| 36 | 1.3 Informes del estado del proyecto 22 | 1h | 2010-08-02 09:00 | 2010-08-02 10:00 |  | start no earlier than 2010-08-02 08:00 | Enrique Madrid |
| 37 | 1.3 Informes del estado del proyecto 23 | 1h | 2010-08-09 09:00 | 2010-08-09 10:00 |  | start no earlier than 2010-08-09 08:00 | Enrique Madrid |
| 38 | 1.3 Informes del estado del proyecto 24 | 1h | 2010-08-16 09:00 | 2010-08-16 10:00 |  | start no earlier than 2010-08-16 08:00 | Enrique Madrid |
| 39 | 1.3 Informes del estado del proyecto 25 | 1h | 2010-08-23 09:00 | 2010-08-23 10:00 |  | start no earlier than 2010-08-23 08:00 | Enrique Madrid |
| 40 | 1.3 Informes del estado del proyecto 26 | 1h | 2010-08-30 09:00 | 2010-08-30 10:00 |  | start no earlier than 2010-08-30 08:00 | Enrique Madrid |
| 41 | 1.3 Informes del estado del proyecto 27 | 1h | 2010-09-06 09:00 | 2010-09-06 10:00 |  | start no earlier than 2010-09-06 08:00 | Enrique Madrid |
| 42 | **1.4 Reunión de Coordinación Semanal** | 130.12d | 2010-03-08 09:00 | 2010-09-06 10:00 |  |  |  |
| 43 | 1.4 Reunión de Coordinación Semanal 1 | 1h | 2010-03-08 09:00 | 2010-03-08 10:00 |  | start no earlier than 2010-03-08 08:00 | Enrique Madrid; Country Manager |
| 44 | 1.4 Reunión de Coordinación Semanal 2 | 1h | 2010-03-15 09:00 | 2010-03-15 10:00 |  | start no earlier than 2010-03-15 08:00 | Enrique Madrid; Country Manager |
| 45 | 1.4 Reunión de Coordinación Semanal 3 | 1h | 2010-03-22 09:00 | 2010-03-22 10:00 |  | start no earlier than 2010-03-22 08:00 | Enrique Madrid; Country Manager |
| 46 | 1.4 Reunión de Coordinación Semanal 4 | 1h | 2010-03-29 09:00 | 2010-03-29 10:00 |  | start no earlier than 2010-03-29 08:00 | Enrique Madrid; Country Manager |
| 47 | 1.4 Reunión de Coordinación Semanal 5 | 1h | 2010-04-05 09:00 | 2010-04-05 10:00 |  | start no earlier than 2010-04-05 08:00 | Enrique Madrid; Country Manager |
| 48 | 1.4 Reunión de Coordinación Semanal 6 | 1h | 2010-04-12 09:00 | 2010-04-12 10:00 |  | start no earlier than 2010-04-12 08:00 | Enrique Madrid; Country Manager |
| 49 | 1.4 Reunión de Coordinación Semanal 7 | 1h | 2010-04-19 09:00 | 2010-04-19 10:00 |  | start no earlier than 2010-04-19 08:00 | Enrique Madrid; Country Manager |
| 50 | 1.4 Reunión de Coordinación Semanal 8 | 1h | 2010-04-26 09:00 | 2010-04-26 10:00 |  | start no earlier than 2010-04-26 08:00 | Enrique Madrid; Country Manager |
| 51 | 1.4 Reunión de Coordinación Semanal 9 | 1h | 2010-05-03 09:00 | 2010-05-03 10:00 |  | start no earlier than 2010-05-03 08:00 | Enrique Madrid; Country Manager |
| 52 | 1.4 Reunión de Coordinación Semanal 10 | 1h | 2010-05-10 09:00 | 2010-05-10 10:00 |  | start no earlier than 2010-05-10 08:00 | Enrique Madrid; Country Manager |
| 53 | 1.4 Reunión de Coordinación Semanal 11 | 1h | 2010-05-17 09:00 | 2010-05-17 10:00 |  | start no earlier than 2010-05-17 08:00 | Enrique Madrid; Country Manager |
| 54 | 1.4 Reunión de Coordinación Semanal 12 | 1h | 2010-05-24 09:00 | 2010-05-24 10:00 |  | start no earlier than 2010-05-24 08:00 | Enrique Madrid; Country Manager |
| 55 | 1.4 Reunión de Coordinación Semanal 13 | 1h | 2010-05-31 09:00 | 2010-05-31 10:00 |  | start no earlier than 2010-05-31 08:00 | Enrique Madrid; Country Manager |
| 56 | 1.4 Reunión de Coordinación Semanal 14 | 1h | 2010-06-07 09:00 | 2010-06-07 10:00 |  | start no earlier than 2010-06-07 08:00 | Enrique Madrid; Country Manager |
| 57 | 1.4 Reunión de Coordinación Semanal 15 | 1h | 2010-06-14 09:00 | 2010-06-14 10:00 |  | start no earlier than 2010-06-14 08:00 | Enrique Madrid; Country Manager |
| 58 | 1.4 Reunión de Coordinación Semanal 16 | 1h | 2010-06-21 09:00 | 2010-06-21 10:00 |  | start no earlier than 2010-06-21 08:00 | Enrique Madrid; Country Manager |
| 59 | 1.4 Reunión de Coordinación Semanal 17 | 1h | 2010-06-28 09:00 | 2010-06-28 10:00 |  | start no earlier than 2010-06-28 08:00 | Enrique Madrid; Country Manager |
| 60 | 1.4 Reunión de Coordinación Semanal 18 | 1h | 2010-07-05 09:00 | 2010-07-05 10:00 |  | start no earlier than 2010-07-05 08:00 | Enrique Madrid; Country Manager |
| 61 | 1.4 Reunión de Coordinación Semanal 19 | 1h | 2010-07-12 09:00 | 2010-07-12 10:00 |  | start no earlier than 2010-07-12 08:00 | Enrique Madrid; Country Manager |
| 62 | 1.4 Reunión de Coordinación Semanal 20 | 1h | 2010-07-19 09:00 | 2010-07-19 10:00 |  | start no earlier than 2010-07-19 08:00 | Enrique Madrid; Country Manager |
| 63 | 1.4 Reunión de Coordinación Semanal 21 | 1h | 2010-07-26 09:00 | 2010-07-26 10:00 |  | start no earlier than 2010-07-26 08:00 | Enrique Madrid; Country Manager |
| 64 | 1.4 Reunión de Coordinación Semanal 22 | 1h | 2010-08-02 09:00 | 2010-08-02 10:00 |  | start no earlier than 2010-08-02 08:00 | Enrique Madrid; Country Manager |
| 65 | 1.4 Reunión de Coordinación Semanal 23 | 1h | 2010-08-09 09:00 | 2010-08-09 10:00 |  | start no earlier than 2010-08-09 08:00 | Enrique Madrid; Country Manager |
| 66 | 1.4 Reunión de Coordinación Semanal 24 | 1h | 2010-08-16 09:00 | 2010-08-16 10:00 |  | start no earlier than 2010-08-16 08:00 | Enrique Madrid; Country Manager |
| 67 | 1.4 Reunión de Coordinación Semanal 25 | 1h | 2010-08-23 09:00 | 2010-08-23 10:00 |  | start no earlier than 2010-08-23 08:00 | Enrique Madrid; Country Manager |
| 68 | 1.4 Reunión de Coordinación Semanal 26 | 1h | 2010-08-30 09:00 | 2010-08-30 10:00 |  | start no earlier than 2010-08-30 08:00 | Enrique Madrid; Country Manager |
| 69 | 1.4 Reunión de Coordinación Semanal 27 | 1h | 2010-09-06 09:00 | 2010-09-06 10:00 |  | start no earlier than 2010-09-06 08:00 | Enrique Madrid; Country Manager |
| 111 | 3.2.5.A01 Construcción aplicativo móvil | 60d | 2010-04-27 12:20 | 2010-07-20 12:20 | 106 |  | Aplicativo móvil [0.1%] |
| 114 | 3.2.5.A01 Importación de impresoras | 30d | 2010-05-03 17:40 | 2010-06-14 17:40 | 109 |  | Impresoras [0.1%] |
| 115 | 3.2.5.A02 Impresión de documentos de venta | 20d | 2010-05-03 17:40 | 2010-05-31 17:40 | 109 |  | Documentos de venta [0.1%] |
| 157 | 6.0.A2 Seguimiento | 10d | 2010-08-24 15:20 | 2010-09-07 15:20 | 156 |  | Gerardo Buytron; Marco Soto |

Removed: 14 1.3 Informes del Estado del Proyecto; 15 1.3.A01 Elaborar informe del estado del proyecto; 16 1.4 Reunion de Coordinacion Semanal; 17 1.4.A01 Realizar reunion de coordinacion

Changed:

| ID | Task | Start | Finish | Duration | Total float | Predecessors | Other |
| --- | --- | --- | --- | --- | --- | --- | --- |
| 1 | **Proyecto inVenta** | 2010-03-11 → 2010-03-08 09:00 (-3d) | 2010-03-11 → 2010-09-07 15:20 (+180d) | 1d? → 131.54d |  |  |  |
| 2 | **1.0 Gestion del Proyecto** | 2010-03-11 → 2010-03-08 09:00 (-3d) | 2010-03-11 → 2010-09-06 16:00 (+179d) | 1d? → 130.62d |  |  |  |
| 3 | **1.1 Iniciacion** | 2010-03-11 → 2010-03-08 09:00 (-3d) | 2010-03-11 → 2010-03-08 18:00 (-3d) | 1d? → 0.88d |  |  |  |
| 4 | **1.1.1 Project Charter** | 2010-03-11 → 2010-03-08 09:00 (-3d) | 2010-03-11 → 2010-03-08 13:00 (-3d) | 1d? → 0.5d |  |  |  |
| 5 | 1.1.1.A01 Reunion con el sponsor | 2010-03-11 → 2010-03-08 09:00 (-3d) | 2010-03-11 → 2010-03-08 10:00 (-3d) | 1d? → 1h |  |  | resources none → Country Manager; Enrique Madrid |
| 6 | 1.1.1 A02 Elaborar Project Charter | 2010-03-11 → 2010-03-08 10:00 (-3d) | 2010-03-11 → 2010-03-08 12:00 (-3d) | 1d? → 2h |  | none → 5 | resources none → Enrique Madrid |
| 7 | 1.1.1.A03 Revisar Project Charter | 2010-03-11 → 2010-03-08 12:00 (-3d) | 2010-03-11 → 2010-03-08 13:00 (-3d) | 1d? → 1h |  | none → 6 | resources none → Country Manager |
| 8 | **1.1.2 Scope Statement** | 2010-03-11 → 2010-03-08 15:00 (-3d) | 2010-03-11 → 2010-03-08 18:00 (-3d) | 1d? → 0.38d |  |  |  |
| 9 | 1.1.2.A01 Reunion con el sponsor | 2010-03-11 → 2010-03-08 15:00 (-3d) | 2010-03-11 → 2010-03-08 16:00 (-3d) | 1d? → 1h |  | none → 7 | resources none → Country Manager; Enrique Madrid |
| 10 | 1.1.2.A02 Elaborar el Scope Statement | 2010-03-11 → 2010-03-08 16:00 (-3d) | 2010-03-11 → 2010-03-08 17:00 (-3d) | 1d? → 1h |  | none → 9 | resources none → Enrique Madrid |
| 11 | 1.1.2.A03 Revisar el Scope Statement | 2010-03-11 → 2010-03-08 17:00 (-3d) | 2010-03-11 → 2010-03-08 18:00 (-3d) | 1d? → 1h |  | none → 10 | resources none → Country Manager |
| 12 | **1.2 Plan del Proyecto** | 2010-03-11 → 2010-03-08 18:00 (-3d) | 2010-03-11 → 2010-03-11 18:00 | 1d? → 3d |  |  |  |
| 13 | 1.2.A01 Elaborar el plan del Proyecto | 2010-03-11 → 2010-03-08 18:00 (-3d) | 2010-03-11 → 2010-03-11 18:00 | 1d? → 24h |  | none → 11 | resources none → Enrique Madrid |
| 70 | **1.5 Cierre del Proyecto** | 2010-03-11 → 2010-09-06 10:00 (+179d) | 2010-03-11 → 2010-09-06 16:00 (+179d) | 1d? → 0.5d | 0d → 0.92d |  |  |
| 71 | 1.5.A01 Elaborar documentos de cierre del proyecto | 2010-03-11 → 2010-09-06 10:00 (+179d) | 2010-03-11 → 2010-09-06 16:00 (+179d) | 1d? → 4h | 0d → 0.92d | none → 41, 69, 180 | resources none → Enrique Madrid |
| 72 | **2.0 Analisis** | 2010-03-11 → 2010-03-11 18:00 | 2010-03-11 → 2010-03-16 19:00 (+5d) | 1d? → 3.12d |  |  |  |
| 73 | **2.1 Listado de necesidades** | 2010-03-11 → 2010-03-11 18:00 | 2010-03-11 → 2010-03-16 19:00 (+5d) | 1d? → 3.12d |  |  |  |
| 74 | 2.1.A01 Determinar las necesidades del servicio | 2010-03-11 → 2010-03-11 18:00 | 2010-03-11 → 2010-03-12 18:00 (+1d) | 1d? → 1d |  | none → 13 | resources none → Enrique Madrid; Gerardo Buytron |
| 75 | 2.1.A02 Determinar las especificaciones y requerimientos | 2010-03-11 → 2010-03-12 18:00 (+1d) | 2010-03-11 → 2010-03-16 19:00 (+5d) | 1d? → 2.12d |  | none → 74 | resources none → Enrique Madrid; Gerardo Buytron |
| 76 | **3.0 Licitacion y Adquisicion** | 2010-03-11 → 2010-03-17 09:00 (+6d) | 2010-03-11 → 2010-07-22 12:20 (+133d) | 1d? → 91.42d |  | none → 73 |  |
| 77 | **3.1 Licitacion** | 2010-03-11 → 2010-03-17 09:00 (+6d) | 2010-03-11 → 2010-04-20 18:20 (+40d) | 1d? → 24.92d |  |  |  |
| 78 | **3.1.1 Análisis de mercado** | 2010-03-11 → 2010-03-17 09:00 (+6d) | 2010-03-11 → 2010-03-23 19:00 (+12d) | 1d? → 5d |  |  |  |
| 79 | 3.1.1.A01 Determinar la capacidad interna y de los costos | 2010-03-11 → 2010-03-17 09:00 (+6d) | 2010-03-11 → 2010-03-17 19:00 (+6d) | 1d? → 1d |  |  | resources none → Gerardo Buytron |
| 80 | 3.1.1.A02 Identificar proveedores calificados | 2010-03-11 → 2010-03-18 09:00 (+7d) | 2010-03-11 → 2010-03-18 19:00 (+7d) | 1d? → 1d |  | none → 79 | resources none → Gerardo Buytron |
| 81 | 3.1.1.A03 Elaborar RFI | 2010-03-11 → 2010-03-19 09:00 (+8d) | 2010-03-11 → 2010-03-19 19:00 (+8d) | 1d? → 1d |  | none → 80 | resources none → Gerardo Buytron |
| 82 | 3.1.1.A04 Recepcionar RFIs | 2010-03-11 → 2010-03-22 09:00 (+11d) | 2010-03-11 → 2010-03-22 19:00 (+11d) | 1d? → 1d |  | none → 81 | resources none → Gerardo Buytron |
| 83 | 3.1.1.A05 Decisiones | 2010-03-11 → 2010-03-23 09:00 (+12d) | 2010-03-11 → 2010-03-23 19:00 (+12d) | 1d? → 1d |  | none → 82 | resources none → Gerardo Buytron |
| 84 | **3.1.2 Solicitud de propuesta (RFP)** | 2010-03-11 → 2010-03-24 09:00 (+13d) | 2010-03-11 → 2010-03-29 19:00 (+18d) | 1d? → 4d |  |  |  |
| 85 | 3.1.2.A01 Desarrollar el criterio de solucion | 2010-03-11 → 2010-03-24 09:00 (+13d) | 2010-03-11 → 2010-03-25 19:00 (+14d) | 1d? → 2d |  | none → 83 | resources none → Gerardo Buytron |
| 86 | 3.1.2.A02 Desarrollar las bases tecnicas | 2010-03-11 → 2010-03-26 09:00 (+15d) | 2010-03-11 → 2010-03-29 19:00 (+18d) | 1d? → 2d |  | none → 85 | resources none → Gerardo Buytron |
| 87 | **3.1.3 Carta de Intención (LOI)** | 2010-03-11 → 2010-03-30 09:00 (+19d) | 2010-03-11 → 2010-04-20 18:20 (+40d) | 1d? → 15.92d |  |  |  |
| 88 | 3.1.3.A01 Emitir el RFQ | 2010-03-11 → 2010-03-30 09:00 (+19d) | 2010-03-11 → 2010-03-30 18:20 (+19d) | 1d? → 0.92d |  | none → 86 | resources none → Gerardo Buytron; Enrique Madrid |
| 89 | 3.1.3.A02 Emitir el RFP | 2010-03-11 → 2010-03-30 18:20 (+19d) | 2010-03-11 → 2010-03-31 18:20 (+20d) | 1d? → 1d |  | none → 88 | resources none → Gerardo Buytron; Enrique Madrid |
| 90 | 3.1.3.A03 Recibir ofertas | 2010-03-11 → 2010-03-31 18:20 (+20d) | 2010-03-11 → 2010-04-07 18:20 (+27d) | 1d? → 5d |  | none → 89 | resources none → Gerardo Buytron |
| 91 | 3.1.3.A04 Evaluar Respuestas | 2010-03-11 → 2010-04-07 18:20 (+27d) | 2010-03-11 → 2010-04-14 18:20 (+34d) | 1d? → 5d |  | none → 90 | resources none → Gerardo Buytron |
| 92 | 3.1.3.A05 Calificar proveedores | 2010-03-11 → 2010-04-14 18:20 (+34d) | 2010-03-11 → 2010-04-16 18:20 (+36d) | 1d? → 2d |  | none → 91 | resources none → Gerardo Buytron |
| 93 | 3.1.3.A06 Adjudicar/Seleccionar Proveedores | 2010-03-11 → 2010-04-16 18:20 (+36d) | 2010-03-11 → 2010-04-19 18:20 (+39d) | 1d? → 1d |  | none → 92 | resources none → Gerardo Buytron |
| 94 | 3.1.3.A07 Emitir Carta de Intención (LOI) | 2010-03-11 → 2010-04-19 18:20 (+39d) | 2010-03-11 → 2010-04-20 18:20 (+40d) | 1d? → 1d |  | none → 93 | resources none → Gerardo Buytron |
| 95 | **3.2 Adquisicion** | 2010-03-11 → 2010-04-20 18:20 (+40d) | 2010-03-11 → 2010-07-22 12:20 (+133d) | 1d? → 66.5d |  |  |  |
| 96 | **3.2.1 Contrato Solucion Movil** | 2010-03-11 → 2010-04-20 18:20 (+40d) | 2010-03-11 → 2010-04-26 12:20 (+46d) | 1d? → 3.5d |  |  |  |
| 97 | 3.2.1.A01 Desarrollar el contrato marco | 2010-03-11 → 2010-04-20 18:20 (+40d) | 2010-03-11 → 2010-04-23 12:20 (+43d) | 1d? → 2.5d |  | none → 94 | resources none → Silvia Torero |
| 98 | 3.2.1.A02 Determinar cronograma | 2010-03-11 → 2010-04-23 12:20 (+43d) | 2010-03-11 → 2010-04-23 18:20 (+43d) | 1d? → 0.5d |  | none → 97 | resources none → Silvia Torero |
| 99 | 3.2.1.A03 Determinar el presupuesto | 2010-03-11 → 2010-04-23 18:20 (+43d) | 2010-03-11 → 2010-04-26 12:20 (+46d) | 1d? → 0.5d |  | none → 98 | resources none → Silvia Torero |
| 100 | **3.2.2 Contrato equipos y suministros** | 2010-03-11 → 2010-04-20 18:20 (+40d) | 2010-03-11 → 2010-04-30 17:40 (+50d) | 1d? → 7.92d | 0d → 40.71d |  |  |
| 101 | 3.2.2.A01 Desarrollar el contrato marco | 2010-03-11 → 2010-04-20 18:20 (+40d) | 2010-03-11 → 2010-04-29 17:40 (+49d) | 1d? → 2.5d | 0d → 40.71d | none → 94 | resources none → Silvia Torero |
| 102 | 3.2.2.A02 Determinar cronograma | 2010-03-11 → 2010-04-29 17:40 (+49d) | 2010-03-11 → 2010-04-30 11:40 (+50d) | 1d? → 0.5d | 0d → 40.71d | none → 101 | resources none → Silvia Torero |
| 103 | 3.2.2.A03 Determinar el presupuesto | 2010-03-11 → 2010-04-30 11:40 (+50d) | 2010-03-11 → 2010-04-30 17:40 (+50d) | 1d? → 0.5d | 0d → 40.71d | none → 102 | resources none → Silvia Torero |
| 104 | **3.2.3 Orden de Compra solucion movil** | 2010-03-11 → 2010-04-26 12:20 (+46d) | 2010-03-11 → 2010-04-27 12:20 (+47d) | 1d? → 1d |  |  |  |
| 105 | 3.2.3.A01 Solicitar la aprobacion del gasto | 2010-03-11 → 2010-04-26 12:20 (+46d) | 2010-03-11 → 2010-04-26 18:20 (+46d) | 1d? → 0.5d |  | none → 99 | resources none → Silvia Torero |
| 106 | 3.2.3.A02 Solicitar la emision de la orden de compra | 2010-03-11 → 2010-04-26 18:20 (+46d) | 2010-03-11 → 2010-04-27 12:20 (+47d) | 1d? → 0.5d |  | none → 105 | resources none → Silvia Torero |
| 107 | **3.2.4 Orden de compra equipos y suministros** | 2010-03-11 → 2010-04-30 17:40 (+50d) | 2010-03-11 → 2010-05-03 17:40 (+53d) | 1d? → 1d | 0d → 40.71d |  |  |
| 108 | 3.2.4.A01 Solicitar la aprobacion del gasto | 2010-03-11 → 2010-04-30 17:40 (+50d) | 2010-03-11 → 2010-05-03 11:40 (+53d) | 1d? → 0.5d | 0d → 40.71d | none → 103 | resources none → Silvia Torero |
| 109 | 3.2.4.A02 Solicitar la emision de la orden de compra | 2010-03-11 → 2010-05-03 11:40 (+53d) | 2010-03-11 → 2010-05-03 17:40 (+53d) | 1d? → 0.5d | 0d → 40.71d | none → 108 | resources none → Silvia Torero |
| 110 | **3.2.5 Aplicativo movil** | 2010-03-11 → 2010-04-27 12:20 (+47d) | 2010-03-11 → 2010-07-22 12:20 (+133d) | 1d? → 62d |  |  |  |
| 112 | 3.2.5.A02 Aprobacion del aplicativo movil | 2010-03-11 → 2010-07-20 12:20 (+131d) | 2010-03-11 → 2010-07-22 12:20 (+133d) | 1d? → 2d |  | none → 111 | was named 3.2.5.A01 Aprobacion del aplicativo movil; resources none → Silvia Torero |
| 113 | **3.2.6 Equipos y suministros** | 2010-03-11 → 2010-05-03 17:40 (+53d) | 2010-03-11 → 2010-06-16 17:40 (+97d) | 1d? → 32d | 0d → 40.71d |  |  |
| 116 | 3.2.6.A03 Aprobacion de los equipos y suministros | 2010-03-11 → 2010-06-14 17:40 (+95d) | 2010-03-11 → 2010-06-16 17:40 (+97d) | 1d? → 2d | 0d → 40.71d | none → 114, 115 | was named 3.2.6.A01 Aprobacion de los equipos y suministros; resources none → Silvia Torero |
| 117 | **4.0 Implementacion** | 2010-03-11 → 2010-07-22 12:20 (+133d) | 2010-03-11 → 2010-08-23 15:20 (+165d) | 1d? → 22.12d |  |  |  |
| 118 | **4.1 Etapa 1** | 2010-03-11 → 2010-07-22 12:20 (+133d) | 2010-03-11 → 2010-07-30 12:20 (+141d) | 1d? → 6d |  |  |  |
| 119 | **4.1.1 Solucion Movil implementada** | 2010-03-11 → 2010-07-22 12:20 (+133d) | 2010-03-11 → 2010-07-28 12:20 (+139d) | 1d? → 4d |  |  |  |
| 120 | 4.1.1.A01 Implementar la solución móvil en la empresa | 2010-03-11 → 2010-07-22 12:20 (+133d) | 2010-03-11 → 2010-07-26 12:20 (+137d) | 1d? → 2d |  | none → 112 | resources none → Marco Soto |
| 121 | 4.1.1.A02 Integrar la solución móvil la backend de la empresa | 2010-03-11 → 2010-07-26 12:20 (+137d) | 2010-03-11 → 2010-07-27 12:20 (+138d) | 1d? → 1d |  | none → 120 | resources none → Marco Soto |
| 122 | 4.1.1.A03 Realizar pruebas en el sistema antes de la implementacion | 2010-03-11 → 2010-07-27 12:20 (+138d) | 2010-03-11 → 2010-07-28 12:20 (+139d) | 1d? → 1d |  | none → 121 | resources none → Marco Soto |
| 123 | **4.1.2 Reporte implementacion** | 2010-03-11 → 2010-07-28 12:20 (+139d) | 2010-03-11 → 2010-07-30 12:20 (+141d) | 1d? → 2d |  |  |  |
| 124 | 4.1.2.A01 Elaborar el reporte de la etapa 1 | 2010-03-11 → 2010-07-28 12:20 (+139d) | 2010-03-11 → 2010-07-29 12:20 (+140d) | 1d? → 1d |  | none → 122 | resources none → Marco Soto |
| 125 | 4.1.2.A02 Revisar el reporte de la etapa 1 | 2010-03-11 → 2010-07-29 12:20 (+140d) | 2010-03-11 → 2010-07-30 12:20 (+141d) | 1d? → 1d |  | none → 124 | resources none → Enrique Madrid |
| 126 | **4.2 Etapa 2** | 2010-03-11 → 2010-08-02 12:20 (+144d) | 2010-03-11 → 2010-08-19 12:20 (+161d) | 1d? → 13d |  |  |  |
| 127 | **4.2.1 Terminales móviles operativos** | 2010-03-11 → 2010-08-02 12:20 (+144d) | 2010-03-11 → 2010-08-16 12:20 (+158d) | 1d? → 10d |  |  |  |
| 128 | 4.2.1.A01 Identificar a los usuarios de aplicativo móvil | 2010-03-11 → 2010-08-02 12:20 (+144d) | 2010-03-11 → 2010-08-03 12:20 (+145d) | 1d? → 1d |  | none → 125 | resources none → Marco Soto |
| 129 | 4.2.1.A02 Entregar terminales móviles a usuarios | 2010-03-11 → 2010-08-09 12:20 (+151d) | 2010-03-11 → 2010-08-10 12:20 (+152d) | 1d? → 1d |  | none → 128 | resources none → Marco Soto |

| ID | Task | Start | Finish | Duration | Total float | Predecessors | Other |
| --- | --- | --- | --- | --- | --- | --- | --- |
| 130 | 4.2.1.A03 Validar la operatividad del aplicativo móvil | 2010-03-11 → 2010-08-12 12:20 (+154d) | 2010-03-11 → 2010-08-16 12:20 (+158d) | 1d? → 2d |  | none → 129 | resources none → Marco Soto |
| 131 | **4.2.2 Reporte implementacion de terminales** | 2010-03-11 → 2010-08-17 12:20 (+159d) | 2010-03-11 → 2010-08-19 12:20 (+161d) | 1d? → 2d |  |  |  |
| 132 | 4.2.2.A01 Elaborar el reporte de la etapa 2 | 2010-03-11 → 2010-08-17 12:20 (+159d) | 2010-03-11 → 2010-08-18 12:20 (+160d) | 1d? → 1d |  | none → 130 | resources none → Marco Soto |
| 133 | 4.2.2.A02 Revisar el reporte de la etapa 2 | 2010-03-11 → 2010-08-18 12:20 (+160d) | 2010-03-11 → 2010-08-19 12:20 (+161d) | 1d? → 1d |  | none → 132 | resources none → Enrique Madrid |
| 134 | **4.3 Etapa 3** | 2010-03-11 → 2010-07-30 12:20 (+141d) | 2010-03-11 → 2010-08-18 12:20 (+160d) | 1d? → 13d | 0d → 1d |  |  |
| 135 | **4.3.1 Impresoras y suminitros operativos** | 2010-03-11 → 2010-07-30 12:20 (+141d) | 2010-03-11 → 2010-08-12 12:20 (+154d) | 1d? → 9d | 0d → 1d |  |  |
| 136 | 4.3.1.A01 Identificar las unidades de transporte que utilizarán la solución móvil | 2010-03-11 → 2010-07-30 12:20 (+141d) | 2010-03-11 → 2010-08-02 12:20 (+144d) | 1d? → 1d | 0d → 1d | none → 125 | resources none → Marco Soto |
| 137 | 4.3.1.A02 Instalar las impresoras y suministros en las unidades de transporte identificadas | 2010-03-11 → 2010-08-03 12:20 (+145d) | 2010-03-11 → 2010-08-09 12:20 (+151d) | 1d? → 4d | 0d → 1d | none → 136 | resources none → Marco Soto |
| 138 | 4.3.1.A03 Validar la operatividad de las impresoras y suministros | 2010-03-11 → 2010-08-10 12:20 (+152d) | 2010-03-11 → 2010-08-12 12:20 (+154d) | 1d? → 2d | 0d → 1d | none → 137 | resources none → Marco Soto |
| 139 | **4.3.2 Reporte de implementacion de equipos** | 2010-03-11 → 2010-08-16 12:20 (+158d) | 2010-03-11 → 2010-08-18 12:20 (+160d) | 1d? → 2d | 0d → 1d |  |  |
| 140 | 4.3.2.A01 Elaborar el reporte de la etapa 3 | 2010-03-11 → 2010-08-16 12:20 (+158d) | 2010-03-11 → 2010-08-17 12:20 (+159d) | 1d? → 1d | 0d → 1d | none → 138 | resources none → Marco Soto |
| 141 | 4.3.2.A02 Revisar el reporte de la etapa 3 | 2010-03-11 → 2010-08-17 12:20 (+159d) | 2010-03-11 → 2010-08-18 12:20 (+160d) | 1d? → 1d | 0d → 1d | none → 140 | resources none → Enrique Madrid |
| 142 | **4.4 Etapa 4** | 2010-03-11 → 2010-08-19 12:20 (+161d) | 2010-03-11 → 2010-08-23 15:20 (+165d) | 1d? → 2.12d |  |  |  |
| 143 | **4.4.1 Documento solucion a problemas** | 2010-03-11 → 2010-08-19 12:20 (+161d) | 2010-03-11 → 2010-08-23 15:20 (+165d) | 1d? → 2.12d |  |  |  |
| 144 | 4.4.1A01 Elaborar el documento de solucion a problemas. | 2010-03-11 → 2010-08-19 12:20 (+161d) | 2010-03-11 → 2010-08-20 12:20 (+162d) | 1d? → 1d |  | none → 133, 141 | resources none → Marco Soto |
| 145 | 4.4.1A02 Revisar el reporte de solucion de problemas | 2010-03-11 → 2010-08-20 12:20 (+162d) | 2010-03-11 → 2010-08-23 15:20 (+165d) | 1d? → 1d |  | none → 144 | resources none → Enrique Madrid |
| 146 | **5.0 Capacitacion** | 2010-03-11 → 2010-07-22 12:20 (+133d) | 2010-03-11 → 2010-08-02 12:20 (+144d) | 1d? → 7d | 0d → 15.12d |  |  |
| 147 | **5.1 Dictado** | 2010-03-11 → 2010-07-22 12:20 (+133d) | 2010-03-11 → 2010-07-26 12:20 (+137d) | 1d? → 2d | 0d → 15.12d |  |  |
| 148 | 5.1.A01 Realizar la sesion | 2010-03-11 → 2010-07-22 12:20 (+133d) | 2010-03-11 → 2010-07-26 12:20 (+137d) | 1d? → 2d | 0d → 15.12d | none → 112, 116 | resources none → Lissette Davila |
| 149 | **5.2 Control de evaluacion** | 2010-03-11 → 2010-07-26 12:20 (+137d) | 2010-03-11 → 2010-07-28 12:20 (+139d) | 1d? → 2d | 0d → 15.12d |  |  |
| 150 | 5.2.A01 Elaborar controles de evaluacion | 2010-03-11 → 2010-07-26 12:20 (+137d) | 2010-03-11 → 2010-07-27 12:20 (+138d) | 1d? → 1d | 0d → 15.12d | none → 148 | resources none → Lissette Davila |
| 151 | 5.2.A02 Revisar controles de capacitacion | 2010-03-11 → 2010-07-27 12:20 (+138d) | 2010-03-11 → 2010-07-28 12:20 (+139d) | 1d? → 1d | 0d → 15.12d | none → 150 | resources none → Lissette Davila |
| 152 | **5.3 Informe** | 2010-03-11 → 2010-07-28 12:20 (+139d) | 2010-03-11 → 2010-08-02 12:20 (+144d) | 1d? → 3d | 0d → 15.12d |  |  |
| 153 | 5.3.A01 Elaborar el informe de la sesion | 2010-03-11 → 2010-07-28 12:20 (+139d) | 2010-03-11 → 2010-07-29 12:20 (+140d) | 1d? → 1d | 0d → 15.12d | none → 151 | resources none → Lissette Davila |
| 154 | 5.3.A02 Revisar informe | 2010-03-11 → 2010-07-30 12:20 (+141d) | 2010-03-11 → 2010-08-02 12:20 (+144d) | 1d? → 1d | 0d → 15.12d | none → 153 | resources none → Enrique Madrid |
| 155 | **6. 0 Salida en vivo** | 2010-03-11 → 2010-08-23 15:20 (+165d) | 2010-03-11 → 2010-09-07 15:20 (+180d) | 1d? → 11d |  |  |  |
| 156 | 6.0.A1 Puesta en marcha del aplicativo | 2010-03-11 → 2010-08-23 15:20 (+165d) | 2010-03-11 → 2010-08-24 15:20 (+166d) | 1d? → 1d |  | none → 145, 154 | resources none → Marco Soto; Enrique Madrid |
| 158 | **7.0 Informes** | 2010-03-11 → 2010-03-29 18:00 (+18d) | 2010-03-11 → 2010-08-31 12:00 (+173d) | 1d? → 110.5d | 0d → 4.67d |  |  |
| 159 | **7.1 Informe mensual** | 2010-03-11 → 2010-03-29 18:00 (+18d) | 2010-03-11 → 2010-08-30 18:00 (+172d) | 1d? → 110d | 0d → 4.67d |  |  |
| 160 | **7.1.1 Informe mes 1** | 2010-03-11 → 2010-03-29 18:00 (+18d) | 2010-03-11 → 2010-03-30 12:00 (+19d) | 1d? → 0.5d | 0d → 4.67d |  |  |
| 161 | 7.1.1.A01 Elaborar informe mensual 1 | 2010-03-11 → 2010-03-29 18:00 (+18d) | 2010-03-11 → 2010-03-30 11:00 (+19d) | 1d? → 3h | 0d → 4.67d | none → 13FS+12d | resources none → Enrique Madrid |
| 162 | 7.1.1.A02 Revisar informe 1 | 2010-03-11 → 2010-03-30 11:00 (+19d) | 2010-03-11 → 2010-03-30 12:00 (+19d) | 1d? → 1h | 0d → 4.67d | none → 161 | resources none → Country Manager |
| 163 | **7.1.2 Informe mes 2** | 2010-03-11 → 2010-04-30 12:00 (+50d) | 2010-03-11 → 2010-04-30 18:00 (+50d) | 1d? → 0.5d | 0d → 4.67d |  |  |
| 164 | 7.1.2.A01 Elaborar informe mensual 2 | 2010-03-11 → 2010-04-30 12:00 (+50d) | 2010-03-11 → 2010-04-30 17:00 (+50d) | 1d? → 3h | 0d → 4.67d | none → 162FS+23d | resources none → Enrique Madrid |
| 165 | 7.1.2.A02 Revisar informe 2 | 2010-03-11 → 2010-04-30 17:00 (+50d) | 2010-03-11 → 2010-04-30 18:00 (+50d) | 1d? → 1h | 0d → 4.67d | none → 164 | resources none → Country Manager |
| 166 | **7.1.3 Informe mes 3** | 2010-03-11 → 2010-05-28 18:00 (+78d) | 2010-03-11 → 2010-05-31 12:00 (+81d) | 1d? → 0.5d | 0d → 4.67d |  |  |
| 167 | 7.1.3.A01 Elaborar informe mensual 3 | 2010-03-11 → 2010-05-28 18:00 (+78d) | 2010-03-11 → 2010-05-31 11:00 (+81d) | 1d? → 3h | 0d → 4.67d | none → 165FS+20d | resources none → Enrique Madrid |
| 168 | 7.1.3.A02 Revisar informe 3 | 2010-03-11 → 2010-05-31 11:00 (+81d) | 2010-03-11 → 2010-05-31 12:00 (+81d) | 1d? → 1h | 0d → 4.67d | none → 167 | resources none → Country Manager |
| 169 | **7.1.4 Informe mes 4** | 2010-03-11 → 2010-06-30 12:00 (+111d) | 2010-03-11 → 2010-06-30 18:00 (+111d) | 1d? → 0.5d | 0d → 4.67d |  |  |
| 170 | 7.1.4.A01 Elaborar informe mensual 4 | 2010-03-11 → 2010-06-30 12:00 (+111d) | 2010-03-11 → 2010-06-30 17:00 (+111d) | 1d? → 3h | 0d → 4.67d | none → 168FS+22d | resources none → Enrique Madrid |
| 171 | 7.1.4.A02 Revisar informe 4 | 2010-03-11 → 2010-06-30 17:00 (+111d) | 2010-03-11 → 2010-06-30 18:00 (+111d) | 1d? → 1h | 0d → 4.67d | none → 170 | resources none → Country Manager |
| 172 | **7.1.5 Informe mes 5** | 2010-03-11 → 2010-07-28 18:00 (+139d) | 2010-03-11 → 2010-07-29 12:00 (+140d) | 1d? → 0.5d | 0d → 4.67d |  |  |
| 173 | 7.1.5.A01 Elaborar informe mensual 5 | 2010-03-11 → 2010-07-28 18:00 (+139d) | 2010-03-11 → 2010-07-29 11:00 (+140d) | 1d? → 3h | 0d → 4.67d | none → 171FS+20d | resources none → Enrique Madrid |
| 174 | 7.1.5.A02 Revisar informe 5 | 2010-03-11 → 2010-07-29 11:00 (+140d) | 2010-03-11 → 2010-07-29 12:00 (+140d) | 1d? → 1h | 0d → 4.67d | none → 173 | resources none → Country Manager |
| 175 | **7.1.6 Informe mes 6** | 2010-03-11 → 2010-08-30 12:00 (+172d) | 2010-03-11 → 2010-08-30 18:00 (+172d) | 1d? → 0.5d | 0d → 4.67d |  |  |
| 176 | 7.1.6.A01 Elaborar informe mensual 6 | 2010-03-11 → 2010-08-30 12:00 (+172d) | 2010-03-11 → 2010-08-30 17:00 (+172d) | 1d? → 3h | 0d → 4.67d | none → 174FS+22d | resources none → Enrique Madrid |
| 177 | 7.1.6.A02 Revisar informe 6 | 2010-03-11 → 2010-08-30 17:00 (+172d) | 2010-03-11 → 2010-08-30 18:00 (+172d) | 1d? → 1h | 0d → 4.67d | none → 176 | resources none → Country Manager |
| 178 | **7.2 Informe final** | 2010-03-11 → 2010-08-30 18:00 (+172d) | 2010-03-11 → 2010-08-31 12:00 (+173d) | 1d? → 0.5d | 0d → 4.67d |  |  |
| 179 | 7.2.A01 Elaborar informe final | 2010-03-11 → 2010-08-30 18:00 (+172d) | 2010-03-11 → 2010-08-31 11:00 (+173d) | 1d? → 3h | 0d → 4.67d | none → 177 | resources none → Enrique Madrid |
| 180 | 7.2.A02 Revisar informe final | 2010-03-11 → 2010-08-31 11:00 (+173d) | 2010-03-11 → 2010-08-31 12:00 (+173d) | 1d? → 1h | 0d → 4.67d | none → 179 | resources none → Country Manager |

## Version 3 (saved 2010-04-08, file POS_Cronograma del Proyecto_v1_0.mpp)

Note of the change: Red completa del proyecto

Last finish stays 2010-09-07.

Changed:

| ID | Task | Total float | Predecessors | Other |
| --- | --- | --- | --- | --- |
| 111 | 3.2.5.A01 Construcción aplicativo móvil |  |  | resources Aplicativo móvil [0.1%] → Aplicativo móvil |
| 114 | 3.2.5.A01 Importación de impresoras | 40.71d → 25.58d |  | resources Impresoras [0.1%] → Impresoras |
| 115 | 3.2.5.A02 Impresión de documentos de venta | 50.71d → 35.58d |  | resources Documentos de venta [0.1%] → Documentos de venta |
| 120 | 4.1.1.A01 Implementar la solución móvil en la empresa |  | 112 → 95 |  |
| 148 | 5.1.A01 Realizar la sesion |  | 112, 116 → 95 | resources Lissette Davila → Lissette Davila; Material de capacitación |
| 157 | 6.0.A2 Seguimiento a usuarios |  |  | was named 6.0.A2 Seguimiento |

## Version 4 (data date 2010-08-16, saved 2010-04-10, file POS_Cronograma del Proyecto_v2_0.mpp)

Note of the change: Modificado

Last finish stays 2010-09-07. Complete tasks 0 → 110.

Changed:

| ID | Task | Start | Finish | Complete | Total float |
| --- | --- | --- | --- | --- | --- |
| 1 | **Proyecto inVenta** | 2010-03-08 09:00 A |  | 0% → 91% |  |
| 2 | **1.0 Gestion del Proyecto** | 2010-03-08 09:00 A |  | 0% → 87% | 0d → 0.92d |
| 3 | **1.1 Iniciacion** | 2010-03-08 09:00 A | 2010-03-08 18:00 A | 0% → 100% | 0d → none |
| 4 | **1.1.1 Project Charter** | 2010-03-08 09:00 A | 2010-03-08 13:00 A | 0% → 100% | 0d → none |
| 5 | 1.1.1.A01 Reunion con el sponsor | 2010-03-08 09:00 A | 2010-03-08 10:00 A | 0% → 100% | 0d → none |
| 6 | 1.1.1 A02 Elaborar Project Charter | 2010-03-08 10:00 A | 2010-03-08 12:00 A | 0% → 100% | 0d → none |
| 7 | 1.1.1.A03 Revisar Project Charter | 2010-03-08 12:00 A | 2010-03-08 13:00 A | 0% → 100% | 0d → none |
| 8 | **1.1.2 Scope Statement** | 2010-03-08 15:00 A | 2010-03-08 18:00 A | 0% → 100% | 0d → none |
| 9 | 1.1.2.A01 Reunion con el sponsor | 2010-03-08 15:00 A | 2010-03-08 16:00 A | 0% → 100% | 0d → none |
| 10 | 1.1.2.A02 Elaborar el Scope Statement | 2010-03-08 16:00 A | 2010-03-08 17:00 A | 0% → 100% | 0d → none |
| 11 | 1.1.2.A03 Revisar el Scope Statement | 2010-03-08 17:00 A | 2010-03-08 18:00 A | 0% → 100% | 0d → none |
| 12 | **1.2 Plan del Proyecto** | 2010-03-08 18:00 A | 2010-03-11 18:00 A | 0% → 100% | 0d → none |
| 13 | 1.2.A01 Elaborar el plan del Proyecto | 2010-03-08 18:00 A | 2010-03-11 18:00 A | 0% → 100% | 0d → none |
| 14 | **1.3 Informes del estado del proyecto** | 2010-03-08 09:00 A |  | 0% → 85% |  |
| 15 | 1.3 Informes del estado del proyecto 1 | 2010-03-08 09:00 A | 2010-03-08 10:00 A | 0% → 100% | 131.42d → none |
| 16 | 1.3 Informes del estado del proyecto 2 | 2010-03-15 09:00 A | 2010-03-15 10:00 A | 0% → 100% | 126.42d → none |
| 17 | 1.3 Informes del estado del proyecto 3 | 2010-03-22 09:00 A | 2010-03-22 10:00 A | 0% → 100% | 121.42d → none |
| 18 | 1.3 Informes del estado del proyecto 4 | 2010-03-29 09:00 A | 2010-03-29 10:00 A | 0% → 100% | 116.42d → none |
| 19 | 1.3 Informes del estado del proyecto 5 | 2010-04-05 09:00 A | 2010-04-05 10:00 A | 0% → 100% | 111.42d → none |
| 20 | 1.3 Informes del estado del proyecto 6 | 2010-04-12 09:00 A | 2010-04-12 10:00 A | 0% → 100% | 106.42d → none |
| 21 | 1.3 Informes del estado del proyecto 7 | 2010-04-19 09:00 A | 2010-04-19 10:00 A | 0% → 100% | 101.42d → none |
| 22 | 1.3 Informes del estado del proyecto 8 | 2010-04-26 09:00 A | 2010-04-26 10:00 A | 0% → 100% | 96.42d → none |
| 23 | 1.3 Informes del estado del proyecto 9 | 2010-05-03 09:00 A | 2010-05-03 10:00 A | 0% → 100% | 91.42d → none |
| 24 | 1.3 Informes del estado del proyecto 10 | 2010-05-10 09:00 A | 2010-05-10 10:00 A | 0% → 100% | 86.42d → none |
| 25 | 1.3 Informes del estado del proyecto 11 | 2010-05-17 09:00 A | 2010-05-17 10:00 A | 0% → 100% | 81.42d → none |
| 26 | 1.3 Informes del estado del proyecto 12 | 2010-05-24 09:00 A | 2010-05-24 10:00 A | 0% → 100% | 76.42d → none |
| 27 | 1.3 Informes del estado del proyecto 13 | 2010-05-31 09:00 A | 2010-05-31 10:00 A | 0% → 100% | 71.42d → none |
| 28 | 1.3 Informes del estado del proyecto 14 | 2010-06-07 09:00 A | 2010-06-07 10:00 A | 0% → 100% | 66.42d → none |
| 29 | 1.3 Informes del estado del proyecto 15 | 2010-06-14 09:00 A | 2010-06-14 10:00 A | 0% → 100% | 61.42d → none |
| 30 | 1.3 Informes del estado del proyecto 16 | 2010-06-21 09:00 A | 2010-06-21 10:00 A | 0% → 100% | 56.42d → none |
| 31 | 1.3 Informes del estado del proyecto 17 | 2010-06-28 09:00 A | 2010-06-28 10:00 A | 0% → 100% | 51.42d → none |
| 32 | 1.3 Informes del estado del proyecto 18 | 2010-07-05 09:00 A | 2010-07-05 10:00 A | 0% → 100% | 46.42d → none |
| 33 | 1.3 Informes del estado del proyecto 19 | 2010-07-12 09:00 A | 2010-07-12 10:00 A | 0% → 100% | 41.42d → none |
| 34 | 1.3 Informes del estado del proyecto 20 | 2010-07-19 09:00 A | 2010-07-19 10:00 A | 0% → 100% | 36.42d → none |
| 35 | 1.3 Informes del estado del proyecto 21 | 2010-07-26 09:00 A | 2010-07-26 10:00 A | 0% → 100% | 31.42d → none |
| 36 | 1.3 Informes del estado del proyecto 22 | 2010-08-02 09:00 A | 2010-08-02 10:00 A | 0% → 100% | 26.42d → none |
| 37 | 1.3 Informes del estado del proyecto 23 | 2010-08-09 09:00 A | 2010-08-09 10:00 A | 0% → 100% | 21.42d → none |
| 42 | **1.4 Reunión de Coordinación Semanal** | 2010-03-08 09:00 A |  | 0% → 85% |  |
| 43 | 1.4 Reunión de Coordinación Semanal 1 | 2010-03-08 09:00 A | 2010-03-08 10:00 A | 0% → 100% | 131.42d → none |
| 44 | 1.4 Reunión de Coordinación Semanal 2 | 2010-03-15 09:00 A | 2010-03-15 10:00 A | 0% → 100% | 126.42d → none |
| 45 | 1.4 Reunión de Coordinación Semanal 3 | 2010-03-22 09:00 A | 2010-03-22 10:00 A | 0% → 100% | 121.42d → none |
| 46 | 1.4 Reunión de Coordinación Semanal 4 | 2010-03-29 09:00 A | 2010-03-29 10:00 A | 0% → 100% | 116.42d → none |
| 47 | 1.4 Reunión de Coordinación Semanal 5 | 2010-04-05 09:00 A | 2010-04-05 10:00 A | 0% → 100% | 111.42d → none |
| 48 | 1.4 Reunión de Coordinación Semanal 6 | 2010-04-12 09:00 A | 2010-04-12 10:00 A | 0% → 100% | 106.42d → none |
| 49 | 1.4 Reunión de Coordinación Semanal 7 | 2010-04-19 09:00 A | 2010-04-19 10:00 A | 0% → 100% | 101.42d → none |
| 50 | 1.4 Reunión de Coordinación Semanal 8 | 2010-04-26 09:00 A | 2010-04-26 10:00 A | 0% → 100% | 96.42d → none |
| 51 | 1.4 Reunión de Coordinación Semanal 9 | 2010-05-03 09:00 A | 2010-05-03 10:00 A | 0% → 100% | 91.42d → none |
| 52 | 1.4 Reunión de Coordinación Semanal 10 | 2010-05-10 09:00 A | 2010-05-10 10:00 A | 0% → 100% | 86.42d → none |
| 53 | 1.4 Reunión de Coordinación Semanal 11 | 2010-05-17 09:00 A | 2010-05-17 10:00 A | 0% → 100% | 81.42d → none |
| 54 | 1.4 Reunión de Coordinación Semanal 12 | 2010-05-24 09:00 A | 2010-05-24 10:00 A | 0% → 100% | 76.42d → none |
| 55 | 1.4 Reunión de Coordinación Semanal 13 | 2010-05-31 09:00 A | 2010-05-31 10:00 A | 0% → 100% | 71.42d → none |
| 56 | 1.4 Reunión de Coordinación Semanal 14 | 2010-06-07 09:00 A | 2010-06-07 10:00 A | 0% → 100% | 66.42d → none |
| 57 | 1.4 Reunión de Coordinación Semanal 15 | 2010-06-14 09:00 A | 2010-06-14 10:00 A | 0% → 100% | 61.42d → none |
| 58 | 1.4 Reunión de Coordinación Semanal 16 | 2010-06-21 09:00 A | 2010-06-21 10:00 A | 0% → 100% | 56.42d → none |
| 59 | 1.4 Reunión de Coordinación Semanal 17 | 2010-06-28 09:00 A | 2010-06-28 10:00 A | 0% → 100% | 51.42d → none |
| 60 | 1.4 Reunión de Coordinación Semanal 18 | 2010-07-05 09:00 A | 2010-07-05 10:00 A | 0% → 100% | 46.42d → none |
| 61 | 1.4 Reunión de Coordinación Semanal 19 | 2010-07-12 09:00 A | 2010-07-12 10:00 A | 0% → 100% | 41.42d → none |
| 62 | 1.4 Reunión de Coordinación Semanal 20 | 2010-07-19 09:00 A | 2010-07-19 10:00 A | 0% → 100% | 36.42d → none |
| 63 | 1.4 Reunión de Coordinación Semanal 21 | 2010-07-26 09:00 A | 2010-07-26 10:00 A | 0% → 100% | 31.42d → none |
| 64 | 1.4 Reunión de Coordinación Semanal 22 | 2010-08-02 09:00 A | 2010-08-02 10:00 A | 0% → 100% | 26.42d → none |
| 65 | 1.4 Reunión de Coordinación Semanal 23 | 2010-08-09 09:00 A | 2010-08-09 10:00 A | 0% → 100% | 21.42d → none |
| 72 | **2.0 Analisis** | 2010-03-11 18:00 A | 2010-03-16 19:00 A | 0% → 100% | 0d → none |
| 73 | **2.1 Listado de necesidades** | 2010-03-11 18:00 A | 2010-03-16 19:00 A | 0% → 100% | 0d → none |
| 74 | 2.1.A01 Determinar las necesidades del servicio | 2010-03-11 18:00 A | 2010-03-12 18:00 A | 0% → 100% | 0d → none |
| 75 | 2.1.A02 Determinar las especificaciones y requerimientos | 2010-03-12 18:00 A | 2010-03-16 19:00 A | 0% → 100% | 0d → none |
| 76 | **3.0 Licitacion y Adquisicion** | 2010-03-17 09:00 A | 2010-07-22 12:20 A | 0% → 100% | 0d → none |
| 77 | **3.1 Licitacion** | 2010-03-17 09:00 A | 2010-04-20 18:20 A | 0% → 100% | 0d → none |
| 78 | **3.1.1 Análisis de mercado** | 2010-03-17 09:00 A | 2010-03-23 19:00 A | 0% → 100% | 0d → none |
| 79 | 3.1.1.A01 Determinar la capacidad interna y de los costos | 2010-03-17 09:00 A | 2010-03-17 19:00 A | 0% → 100% | 0d → none |
| 80 | 3.1.1.A02 Identificar proveedores calificados | 2010-03-18 09:00 A | 2010-03-18 19:00 A | 0% → 100% | 0d → none |

| ID | Task | Start | Finish | Complete | Total float |
| --- | --- | --- | --- | --- | --- |
| 81 | 3.1.1.A03 Elaborar RFI | 2010-03-19 09:00 A | 2010-03-19 19:00 A | 0% → 100% | 0d → none |
| 82 | 3.1.1.A04 Recepcionar RFIs | 2010-03-22 09:00 A | 2010-03-22 19:00 A | 0% → 100% | 0d → none |
| 83 | 3.1.1.A05 Decisiones | 2010-03-23 09:00 A | 2010-03-23 19:00 A | 0% → 100% | 0d → none |
| 84 | **3.1.2 Solicitud de propuesta (RFP)** | 2010-03-24 09:00 A | 2010-03-29 19:00 A | 0% → 100% | 0d → none |
| 85 | 3.1.2.A01 Desarrollar el criterio de solucion | 2010-03-24 09:00 A | 2010-03-25 19:00 A | 0% → 100% | 0d → none |
| 86 | 3.1.2.A02 Desarrollar las bases tecnicas | 2010-03-26 09:00 A | 2010-03-29 19:00 A | 0% → 100% | 0d → none |
| 87 | **3.1.3 Carta de Intención (LOI)** | 2010-03-30 09:00 A | 2010-04-20 18:20 A | 0% → 100% | 0d → none |
| 88 | 3.1.3.A01 Emitir el RFQ | 2010-03-30 09:00 A | 2010-03-30 18:20 A | 0% → 100% | 0d → none |
| 89 | 3.1.3.A02 Emitir el RFP | 2010-03-30 18:20 A | 2010-03-31 18:20 A | 0% → 100% | 0d → none |
| 90 | 3.1.3.A03 Recibir ofertas | 2010-03-31 18:20 A | 2010-04-07 18:20 A | 0% → 100% | 0d → none |
| 91 | 3.1.3.A04 Evaluar Respuestas | 2010-04-07 18:20 A | 2010-04-14 18:20 A | 0% → 100% | 0d → none |
| 92 | 3.1.3.A05 Calificar proveedores | 2010-04-14 18:20 A | 2010-04-16 18:20 A | 0% → 100% | 0d → none |
| 93 | 3.1.3.A06 Adjudicar/Seleccionar Proveedores | 2010-04-16 18:20 A | 2010-04-19 18:20 A | 0% → 100% | 0d → none |
| 94 | 3.1.3.A07 Emitir Carta de Intención (LOI) | 2010-04-19 18:20 A | 2010-04-20 18:20 A | 0% → 100% | 0d → none |
| 95 | **3.2 Adquisicion** | 2010-04-20 18:20 A | 2010-07-22 12:20 A | 0% → 100% | 0d → none |
| 96 | **3.2.1 Contrato Solucion Movil** | 2010-04-20 18:20 A | 2010-04-26 12:20 A | 0% → 100% | 0d → none |
| 97 | 3.2.1.A01 Desarrollar el contrato marco | 2010-04-20 18:20 A | 2010-04-23 12:20 A | 0% → 100% | 0d → none |
| 98 | 3.2.1.A02 Determinar cronograma | 2010-04-23 12:20 A | 2010-04-23 18:20 A | 0% → 100% | 0d → none |
| 99 | 3.2.1.A03 Determinar el presupuesto | 2010-04-23 18:20 A | 2010-04-26 12:20 A | 0% → 100% | 0d → none |
| 100 | **3.2.2 Contrato equipos y suministros** | 2010-04-20 18:20 A | 2010-04-30 17:40 A | 0% → 100% | 25.58d → none |
| 101 | 3.2.2.A01 Desarrollar el contrato marco | 2010-04-20 18:20 A | 2010-04-29 17:40 A | 0% → 100% | 25.58d → none |
| 102 | 3.2.2.A02 Determinar cronograma | 2010-04-29 17:40 A | 2010-04-30 11:40 A | 0% → 100% | 25.58d → none |
| 103 | 3.2.2.A03 Determinar el presupuesto | 2010-04-30 11:40 A | 2010-04-30 17:40 A | 0% → 100% | 25.58d → none |
| 104 | **3.2.3 Orden de Compra solucion movil** | 2010-04-26 12:20 A | 2010-04-27 12:20 A | 0% → 100% | 0d → none |
| 105 | 3.2.3.A01 Solicitar la aprobacion del gasto | 2010-04-26 12:20 A | 2010-04-26 18:20 A | 0% → 100% | 0d → none |
| 106 | 3.2.3.A02 Solicitar la emision de la orden de compra | 2010-04-26 18:20 A | 2010-04-27 12:20 A | 0% → 100% | 0d → none |
| 107 | **3.2.4 Orden de compra equipos y suministros** | 2010-04-30 17:40 A | 2010-05-03 17:40 A | 0% → 100% | 25.58d → none |
| 108 | 3.2.4.A01 Solicitar la aprobacion del gasto | 2010-04-30 17:40 A | 2010-05-03 11:40 A | 0% → 100% | 25.58d → none |
| 109 | 3.2.4.A02 Solicitar la emision de la orden de compra | 2010-05-03 11:40 A | 2010-05-03 17:40 A | 0% → 100% | 25.58d → none |
| 110 | **3.2.5 Aplicativo movil** | 2010-04-27 12:20 A | 2010-07-22 12:20 A | 0% → 100% | 0d → none |
| 111 | 3.2.5.A01 Construcción aplicativo móvil | 2010-04-27 12:20 A | 2010-07-20 12:20 A | 0% → 100% | 0d → none |
| 112 | 3.2.5.A02 Aprobacion del aplicativo movil | 2010-07-20 12:20 A | 2010-07-22 12:20 A | 0% → 100% | 0d → none |
| 113 | **3.2.6 Equipos y suministros** | 2010-05-03 17:40 A | 2010-06-16 17:40 A | 0% → 100% | 25.58d → none |
| 114 | 3.2.5.A01 Importación de impresoras | 2010-05-03 17:40 A | 2010-06-14 17:40 A | 0% → 100% | 25.58d → none |
| 115 | 3.2.5.A02 Impresión de documentos de venta | 2010-05-03 17:40 A | 2010-05-31 17:40 A | 0% → 100% | 35.58d → none |
| 116 | 3.2.6.A03 Aprobacion de los equipos y suministros | 2010-06-14 17:40 A | 2010-06-16 17:40 A | 0% → 100% | 25.58d → none |
| 117 | **4.0 Implementacion** | 2010-07-22 12:20 A |  | 0% → 74% |  |
| 118 | **4.1 Etapa 1** | 2010-07-22 12:20 A | 2010-07-30 12:20 A | 0% → 100% | 0d → none |
| 119 | **4.1.1 Solucion Movil implementada** | 2010-07-22 12:20 A | 2010-07-28 12:20 A | 0% → 100% | 0d → none |
| 120 | 4.1.1.A01 Implementar la solución móvil en la empresa | 2010-07-22 12:20 A | 2010-07-26 12:20 A | 0% → 100% | 0d → none |
| 121 | 4.1.1.A02 Integrar la solución móvil la backend de la empresa | 2010-07-26 12:20 A | 2010-07-27 12:20 A | 0% → 100% | 0d → none |
| 122 | 4.1.1.A03 Realizar pruebas en el sistema antes de la implementacion | 2010-07-27 12:20 A | 2010-07-28 12:20 A | 0% → 100% | 0d → none |
| 123 | **4.1.2 Reporte implementacion** | 2010-07-28 12:20 A | 2010-07-30 12:20 A | 0% → 100% | 0d → none |
| 124 | 4.1.2.A01 Elaborar el reporte de la etapa 1 | 2010-07-28 12:20 A | 2010-07-29 12:20 A | 0% → 100% | 0d → none |
| 125 | 4.1.2.A02 Revisar el reporte de la etapa 1 | 2010-07-29 12:20 A | 2010-07-30 12:20 A | 0% → 100% | 0d → none |
| 126 | **4.2 Etapa 2** | 2010-08-02 12:20 A |  | 0% → 67% |  |
| 127 | **4.2.1 Terminales móviles operativos** | 2010-08-02 12:20 A | 2010-08-16 12:20 A | 0% → 100% | 0d → none |
| 128 | 4.2.1.A01 Identificar a los usuarios de aplicativo móvil | 2010-08-02 12:20 A | 2010-08-03 12:20 A | 0% → 100% | 0d → none |
| 129 | 4.2.1.A02 Entregar terminales móviles a usuarios | 2010-08-09 12:20 A | 2010-08-10 12:20 A | 0% → 100% | 0d → none |
| 130 | 4.2.1.A03 Validar la operatividad del aplicativo móvil | 2010-08-12 12:20 A | 2010-08-16 12:20 A | 0% → 100% | 0d → none |
| 134 | **4.3 Etapa 3** | 2010-07-30 12:20 A |  | 0% → 78% |  |
| 135 | **4.3.1 Impresoras y suminitros operativos** | 2010-07-30 12:20 A | 2010-08-12 12:20 A | 0% → 100% | 1d → none |
| 136 | 4.3.1.A01 Identificar las unidades de transporte que utilizarán la solución móvil | 2010-07-30 12:20 A | 2010-08-02 12:20 A | 0% → 100% | 1d → none |
| 137 | 4.3.1.A02 Instalar las impresoras y suministros en las unidades de transporte identificadas | 2010-08-03 12:20 A | 2010-08-09 12:20 A | 0% → 100% | 1d → none |
| 138 | 4.3.1.A03 Validar la operatividad de las impresoras y suministros | 2010-08-10 12:20 A | 2010-08-12 12:20 A | 0% → 100% | 1d → none |
| 146 | **5.0 Capacitacion** | 2010-07-22 12:20 A | 2010-08-02 12:20 A | 0% → 100% | 15.12d → none |
| 147 | **5.1 Dictado** | 2010-07-22 12:20 A | 2010-07-26 12:20 A | 0% → 100% | 15.12d → none |
| 148 | 5.1.A01 Realizar la sesion | 2010-07-22 12:20 A | 2010-07-26 12:20 A | 0% → 100% | 15.12d → none |
| 149 | **5.2 Control de evaluacion** | 2010-07-26 12:20 A | 2010-07-28 12:20 A | 0% → 100% | 15.12d → none |
| 150 | 5.2.A01 Elaborar controles de evaluacion | 2010-07-26 12:20 A | 2010-07-27 12:20 A | 0% → 100% | 15.12d → none |
| 151 | 5.2.A02 Revisar controles de capacitacion | 2010-07-27 12:20 A | 2010-07-28 12:20 A | 0% → 100% | 15.12d → none |
| 152 | **5.3 Informe** | 2010-07-28 12:20 A | 2010-08-02 12:20 A | 0% → 100% | 15.12d → none |
| 153 | 5.3.A01 Elaborar el informe de la sesion | 2010-07-28 12:20 A | 2010-07-29 12:20 A | 0% → 100% | 15.12d → none |
| 154 | 5.3.A02 Revisar informe | 2010-07-30 12:20 A | 2010-08-02 12:20 A | 0% → 100% | 15.12d → none |
| 158 | **7.0 Informes** | 2010-03-29 18:00 A |  | 0% → 71% |  |
| 159 | **7.1 Informe mensual** | 2010-03-29 18:00 A |  | 0% → 83% |  |
| 160 | **7.1.1 Informe mes 1** | 2010-03-29 18:00 A | 2010-03-30 12:00 A | 0% → 100% | 4.67d → none |
| 161 | 7.1.1.A01 Elaborar informe mensual 1 | 2010-03-29 18:00 A | 2010-03-30 11:00 A | 0% → 100% | 4.67d → none |
| 162 | 7.1.1.A02 Revisar informe 1 | 2010-03-30 11:00 A | 2010-03-30 12:00 A | 0% → 100% | 4.67d → none |
| 163 | **7.1.2 Informe mes 2** | 2010-04-30 12:00 A | 2010-04-30 18:00 A | 0% → 100% | 4.67d → none |

| ID | Task | Start | Finish | Complete | Total float |
| --- | --- | --- | --- | --- | --- |
| 164 | 7.1.2.A01 Elaborar informe mensual 2 | 2010-04-30 12:00 A | 2010-04-30 17:00 A | 0% → 100% | 4.67d → none |
| 165 | 7.1.2.A02 Revisar informe 2 | 2010-04-30 17:00 A | 2010-04-30 18:00 A | 0% → 100% | 4.67d → none |
| 166 | **7.1.3 Informe mes 3** | 2010-05-28 18:00 A | 2010-05-31 12:00 A | 0% → 100% | 4.67d → none |
| 167 | 7.1.3.A01 Elaborar informe mensual 3 | 2010-05-28 18:00 A | 2010-05-31 11:00 A | 0% → 100% | 4.67d → none |
| 168 | 7.1.3.A02 Revisar informe 3 | 2010-05-31 11:00 A | 2010-05-31 12:00 A | 0% → 100% | 4.67d → none |
| 169 | **7.1.4 Informe mes 4** | 2010-06-30 12:00 A | 2010-06-30 18:00 A | 0% → 100% | 4.67d → none |
| 170 | 7.1.4.A01 Elaborar informe mensual 4 | 2010-06-30 12:00 A | 2010-06-30 17:00 A | 0% → 100% | 4.67d → none |
| 171 | 7.1.4.A02 Revisar informe 4 | 2010-06-30 17:00 A | 2010-06-30 18:00 A | 0% → 100% | 4.67d → none |
| 172 | **7.1.5 Informe mes 5** | 2010-07-28 18:00 A | 2010-07-29 12:00 A | 0% → 100% | 4.67d → none |
| 173 | 7.1.5.A01 Elaborar informe mensual 5 | 2010-07-28 18:00 A | 2010-07-29 11:00 A | 0% → 100% | 4.67d → none |
| 174 | 7.1.5.A02 Revisar informe 5 | 2010-07-29 11:00 A | 2010-07-29 12:00 A | 0% → 100% | 4.67d → none |
